# Plan de trabajo AFIRME Simulador de captación

Schedule from MS Project, 2016-04-19 to 2016-04-22.
Microsoft

## Calendars

- Estándar: Mon-Fri 09:00-13:00, 15:00-19:00; Sat-Sun off.

## Resources

| Resource |
| --- |
| Montserrat Glez |
| Daniela Nag |
| Saúl Glez |
| Montserrat Gonzalez |
| Daniela Najera |
| Saúl Gonzalez |
| Angel Gurrola |
| Ruben Rocha |
| MIguel del Hoyo |

## Schedule

| ID | WBS | Task | Type | Duration | Start | Finish | Predecessors | Total slack | Resources | Work |
| --- | --- | --- | --- | --- | --- | --- | --- | --- | --- | --- |
| 1 | 1 | **Proyecto Simulador de Captacion** |  | 4d? | 2016-04-19 | 2016-04-22 |  | 0d |  | 1520h |
| 2 | 1.1 | **Diseño de banner** |  | 2d | 2016-04-19 | 2016-04-20 |  | 0d | Montserrat Gonzalez | 16h |
| 3 | 1.1.1 | Boceto del banner |  | 1d | 2016-04-19 | 2016-04-19 |  | 3d |  |  |
| 4 | 1.1.2 | Recopilación y retoque de imágenes para el banner | manual | 2d | 2016-04-19 | 2016-04-20 |  |  |  |  |
| 5 | 1.1.3 | Integración y armado del banner | manual | 1d | 2016-04-19 | 2016-04-19 |  |  |  |  |
| 6 | 1.2 | **Diseño de interfaces** |  | 2d | 2016-04-19 | 2016-04-20 |  | 0d |  | 96h |
| 7 | 1.2.1 | Back-end | manual | 2d | 2016-04-19 | 2016-04-20 |  |  | Ruben Rocha; MIguel del Hoyo | 32h |
| 8 | 1.2.2 | Front-end | manual | 2d | 2016-04-19 | 2016-04-20 |  |  | Montserrat Gonzalez; Daniela Najera; Saúl Gonzalez; Angel Gurrola | 64h |
| 9 | 1.3 | **Esquema de autorizacion** |  | 1d? | 2016-04-19 | 2016-04-19 |  | 0d |  | 48h |
| 10 | 1.3.1 | Back-end | manual | 1d? | 2016-04-19 | 2016-04-19 |  |  | Ruben Rocha; MIguel del Hoyo | 16h |
| 11 | 1.3.2 | Front-end | manual | 1d? | 2016-04-19 | 2016-04-19 |  |  | Montserrat Gonzalez; Daniela Najera; Saúl Gonzalez; Angel Gurrola | 32h |
| 12 | 1.4 | **Simulador de transferencia de saldo** |  | 4d? | 2016-04-19 | 2016-04-22 |  | 0d |  | 1360h |
| 13 | 1.4.1 | **TDC** |  | 1d | 2016-04-20 | 2016-04-21 |  | 0d |  | 432h |
| 14 | 1.4.1.1 | **Creacion de campos de captura** |  | 1d | 2016-04-20 | 2016-04-21 | 6 | 0d |  | 48h |
| 15 | 1.4.1.1.1 | Back-end | manual | 1d | 2016-04-20 | 2016-04-21 |  |  | Ruben Rocha; MIguel del Hoyo | 16h |
| 16 | 1.4.1.1.2 | Front-end | manual | 1d | 2016-04-20 | 2016-04-21 |  |  | Montserrat Gonzalez; Daniela Najera; Saúl Gonzalez; Angel Gurrola | 32h |
| 17 | 1.4.1.2 | **Realizacion de calculo de la oferta** |  | 1d | 2016-04-20 | 2016-04-21 | 6 | 0d |  | 48h |
| 18 | 1.4.1.2.1 | Back-end | manual | 1d | 2016-04-20 | 2016-04-21 |  |  | Ruben Rocha; MIguel del Hoyo | 16h |
| 19 | 1.4.1.2.2 | Front-end | manual | 1d | 2016-04-20 | 2016-04-21 |  |  | Montserrat Gonzalez; Daniela Najera; Saúl Gonzalez; Angel Gurrola | 32h |
| 20 | 1.4.1.3 | **Demostracion del calculo de pagos a plazos** |  | 1d | 2016-04-20 | 2016-04-21 | 6 | 0d |  | 48h |
| 21 | 1.4.1.3.1 | Back-end | manual | 1d | 2016-04-20 | 2016-04-21 |  |  | Ruben Rocha; MIguel del Hoyo | 16h |
| 22 | 1.4.1.3.2 | Front-end | manual | 1d | 2016-04-20 | 2016-04-21 |  |  | Montserrat Gonzalez; Daniela Najera; Saúl Gonzalez; Angel Gurrola | 32h |
| 23 | 1.4.1.4 | **Boton de tramite de TDC** |  | 1d | 2016-04-20 | 2016-04-21 | 6 | 0d |  | 96h |
| 24 | 1.4.1.4.1 | **Crear boton de enlace** |  | 1d | 2016-04-20 | 2016-04-21 | 6 | 0d |  | 48h |
| 25 | 1.4.1.4.1.1 | Back-end | manual | 1d | 2016-04-20 | 2016-04-21 |  |  | Ruben Rocha; MIguel del Hoyo | 16h |
| 26 | 1.4.1.4.1.2 | Front-end | manual | 1d | 2016-04-20 | 2016-04-21 |  |  | Montserrat Gonzalez; Daniela Najera; Saúl Gonzalez; Angel Gurrola | 32h |

| ID | WBS | Task | Type | Duration | Start | Finish | Predecessors | Total slack | Resources | Work |
| --- | --- | --- | --- | --- | --- | --- | --- | --- | --- | --- |
| 27 | 1.4.1.4.2 | **Mostrar Pop-ups de la documentacion para tramite de la tarjeta en sucursal** |  | 1d | 2016-04-20 | 2016-04-21 |  | 0d |  | 48h |
| 28 | 1.4.1.4.2.1 | Back-end | manual | 1d | 2016-04-20 | 2016-04-21 |  |  | Ruben Rocha; MIguel del Hoyo | 16h |
| 29 | 1.4.1.4.2.2 | Front-end | manual | 1d | 2016-04-20 | 2016-04-21 |  |  | Montserrat Gonzalez; Daniela Najera; Saúl Gonzalez; Angel Gurrola | 32h |
| 30 | 1.4.1.5 | **Boton Legal** |  | 1d | 2016-04-20 | 2016-04-21 | 6 | 0d |  | 96h |
| 31 | 1.4.1.5.1 | **Crear boton de enlace** |  | 1d | 2016-04-20 | 2016-04-21 |  | 0d |  | 48h |
| 32 | 1.4.1.5.1.1 | Back-end | manual | 1d | 2016-04-20 | 2016-04-21 |  |  | Ruben Rocha; MIguel del Hoyo | 16h |
| 33 | 1.4.1.5.1.2 | Front-end | manual | 1d | 2016-04-20 | 2016-04-21 |  |  | Montserrat Gonzalez; Daniela Najera; Saúl Gonzalez; Angel Gurrola | 32h |
| 34 | 1.4.1.5.2 | **Mostrar la informacion legal de la promocion** |  | 1d | 2016-04-20 | 2016-04-21 |  | 0d |  | 48h |
| 35 | 1.4.1.5.2.1 | Back-end | manual | 1d | 2016-04-20 | 2016-04-21 |  |  | Ruben Rocha; MIguel del Hoyo | 16h |
| 36 | 1.4.1.5.2.2 | Front-end | manual | 1d | 2016-04-20 | 2016-04-21 |  |  | Montserrat Gonzalez; Daniela Najera; Saúl Gonzalez; Angel Gurrola | 32h |
| 37 | 1.4.1.6 | **Boton de enviar informacion** |  | 1d | 2016-04-20 | 2016-04-21 | 6 | 0d |  | 96h |
| 38 | 1.4.1.6.1 | **Crear boton de enlace** |  | 1d | 2016-04-20 | 2016-04-21 |  | 0d |  | 48h |
| 39 | 1.4.1.6.1.1 | Back-end | manual | 1d | 2016-04-20 | 2016-04-21 |  |  | Ruben Rocha; MIguel del Hoyo | 16h |
| 40 | 1.4.1.6.1.2 | Front-end | manual | 1d | 2016-04-20 | 2016-04-21 |  |  | Montserrat Gonzalez; Daniela Najera; Saúl Gonzalez; Angel Gurrola | 32h |
| 41 | 1.4.1.6.2 | **Mostrar formulario para que el prospecto sea contactado** |  | 1d | 2016-04-20 | 2016-04-21 |  | 0d |  | 48h |
| 42 | 1.4.1.6.2.1 | Back-end | manual | 1d | 2016-04-20 | 2016-04-21 |  |  | Ruben Rocha; MIguel del Hoyo | 16h |
| 43 | 1.4.1.6.2.2 | Front-end | manual | 1d | 2016-04-20 | 2016-04-21 |  |  | Montserrat Gonzalez; Daniela Najera; Saúl Gonzalez; Angel Gurrola | 32h |
| 44 | 1.4.2 | **Hipotecario** |  | 2d? | 2016-04-20 | 2016-04-22 | 6 | 0d |  | 496h |
| 45 | 1.4.2.1 | **Creacion de campos de captura** |  | 1d | 2016-04-20 | 2016-04-21 | 6 | 0d |  | 48h |
| 46 | 1.4.2.1.1 | Back-end | manual | 1d | 2016-04-20 | 2016-04-21 |  |  | Ruben Rocha; MIguel del Hoyo | 16h |
| 47 | 1.4.2.1.2 | Front-end | manual | 1d | 2016-04-20 | 2016-04-21 |  |  | Montserrat Gonzalez; Daniela Najera; Saúl Gonzalez; Angel Gurrola | 32h |
| 48 | 1.4.2.2 | **Creacion de campos a seleccionar (3)** |  | 1d | 2016-04-20 | 2016-04-21 | 6 | 0d |  | 48h |
| 49 | 1.4.2.2.1 | Back-end | manual | 1d | 2016-04-20 | 2016-04-21 |  |  | Ruben Rocha; MIguel del Hoyo | 16h |
| 50 | 1.4.2.2.2 | Front-end | manual | 1d | 2016-04-20 | 2016-04-21 |  |  | Montserrat Gonzalez; Daniela Najera; Saúl Gonzalez; Angel Gurrola | 32h |

| ID | WBS | Task | Type | Duration | Start | Finish | Predecessors | Total slack | Resources | Work |
| --- | --- | --- | --- | --- | --- | --- | --- | --- | --- | --- |
| 51 | 1.4.2.3 | **Realizacion de calculo de la oferta** |  | 1d | 2016-04-20 | 2016-04-21 | 6 | 0d |  | 48h |
| 52 | 1.4.2.3.1 | Back-end | manual | 1d | 2016-04-20 | 2016-04-21 |  |  | Ruben Rocha; MIguel del Hoyo | 16h |
| 53 | 1.4.2.3.2 | Front-end | manual | 1d | 2016-04-20 | 2016-04-21 |  |  | Montserrat Gonzalez; Daniela Najera; Saúl Gonzalez; Angel Gurrola | 32h |
| 54 | 1.4.2.4 | **Demostracion del calculo de pagos a plazos** |  | 1d | 2016-04-20 | 2016-04-21 | 6 | 0d |  | 48h |
| 55 | 1.4.2.4.1 | Back-end | manual | 1d | 2016-04-20 | 2016-04-21 |  |  | Ruben Rocha; MIguel del Hoyo | 16h |
| 56 | 1.4.2.4.2 | Front-end | manual | 1d | 2016-04-20 | 2016-04-21 |  |  | Montserrat Gonzalez; Daniela Najera; Saúl Gonzalez; Angel Gurrola | 32h |
| 57 | 1.4.2.5 | **Boton de tramite de credito hipotecario** |  | 1d? | 2016-04-20 | 2016-04-21 | 6 | 0d |  | 96h |
| 58 | 1.4.2.5.1 | **Crear boton de enlace** |  | 1d? | 2016-04-20 | 2016-04-21 | 6 | 0d |  | 48h |
| 59 | 1.4.2.5.1.1 | Back-end | manual | 1d? | 2016-04-20 | 2016-04-21 |  |  | Ruben Rocha; MIguel del Hoyo | 16h |
| 60 | 1.4.2.5.1.2 | Front-end | manual | 1d? | 2016-04-20 | 2016-04-21 |  |  | Montserrat Gonzalez; Daniela Najera; Saúl Gonzalez; Angel Gurrola | 32h |
| 61 | 1.4.2.5.2 | **Mostrar Pop-ups de la documentacion para tramite de la tarjeta en sucursal** |  | 1d? | 2016-04-20 | 2016-04-21 | 6 | 0d |  | 48h |
| 62 | 1.4.2.5.2.1 | Back-end | manual | 1d? | 2016-04-20 | 2016-04-21 |  |  | Ruben Rocha; MIguel del Hoyo | 16h |
| 63 | 1.4.2.5.2.2 | Front-end | manual | 1d? | 2016-04-20 | 2016-04-21 |  |  | Montserrat Gonzalez; Daniela Najera; Saúl Gonzalez; Angel Gurrola | 32h |
| 64 | 1.4.2.6 | **Boton Legal** |  | 1d? | 2016-04-20 | 2016-04-21 | 6 | 0d |  | 96h |
| 65 | 1.4.2.6.1 | **Crear boton de enlace** |  | 1d? | 2016-04-20 | 2016-04-21 | 6 | 0d |  | 48h |
| 66 | 1.4.2.6.1.1 | Back-end | manual | 1d? | 2016-04-20 | 2016-04-21 |  |  | Ruben Rocha; MIguel del Hoyo | 16h |
| 67 | 1.4.2.6.1.2 | Front-end | manual | 1d? | 2016-04-20 | 2016-04-21 |  |  | Montserrat Gonzalez; Daniela Najera; Saúl Gonzalez; Angel Gurrola | 32h |
| 68 | 1.4.2.6.2 | **Mostrar la informacion legal de la promocion** |  | 1d? | 2016-04-20 | 2016-04-21 | 6 | 0d |  | 48h |
| 69 | 1.4.2.6.2.1 | Back-end | manual | 1d? | 2016-04-20 | 2016-04-21 |  |  | Ruben Rocha; MIguel del Hoyo | 16h |
| 70 | 1.4.2.6.2.2 | Front-end | manual | 1d? | 2016-04-20 | 2016-04-21 |  |  | Montserrat Gonzalez; Daniela Najera; Saúl Gonzalez; Angel Gurrola | 32h |
| 71 | 1.4.2.7 | **Boton de enviar informacion** |  | 2d? | 2016-04-20 | 2016-04-22 | 6 | 0d |  | 112h |
| 72 | 1.4.2.7.1 | **Crear boton de enlace** |  | 1d? | 2016-04-20 | 2016-04-21 | 6 | 0d |  | 48h |
| 73 | 1.4.2.7.1.1 | Back-end | manual | 1d? | 2016-04-20 | 2016-04-21 |  |  | Ruben Rocha; MIguel del Hoyo | 16h |
| 74 | 1.4.2.7.1.2 | Front-end | manual | 1d? | 2016-04-20 | 2016-04-21 |  |  | Montserrat Gonzalez; Daniela Najera; Saúl Gonzalez; Angel Gurrola | 32h |

| ID | WBS | Task | Type | Duration | Start | Finish | Predecessors | Total slack | Resources | Work |
| --- | --- | --- | --- | --- | --- | --- | --- | --- | --- | --- |
| 75 | 1.4.2.7.2 | **Mostrar formulario para que el prospecto sea contactado** |  | 2d | 2016-04-20 | 2016-04-22 | 6 | 0d |  | 64h |
| 76 | 1.4.2.7.2.1 | Back-end | manual | 2d | 2016-04-20 | 2016-04-22 |  |  | Ruben Rocha; MIguel del Hoyo | 32h |
| 77 | 1.4.2.7.2.2 | Front-end | manual | 1d | 2016-04-20 | 2016-04-21 |  |  | Montserrat Gonzalez; Daniela Najera; Saúl Gonzalez; Angel Gurrola | 32h |
| 78 | 1.4.3 | **Nomina** |  | 1d? | 2016-04-19 | 2016-04-19 |  | 0d |  | 432h |
| 79 | 1.4.3.1 | **Creacion de campos de captura** |  | 1d? | 2016-04-19 | 2016-04-19 |  | 0d |  | 48h |
| 80 | 1.4.3.1.1 | Back-end | manual | 1d? | 2016-04-19 | 2016-04-19 |  |  | Ruben Rocha; MIguel del Hoyo | 16h |
| 81 | 1.4.3.1.2 | Front-end | manual | 1d? | 2016-04-19 | 2016-04-19 |  |  | Montserrat Gonzalez; Daniela Najera; Saúl Gonzalez; Angel Gurrola | 32h |
| 82 | 1.4.3.2 | **Realizacion de calculo de la oferta** |  | 1d? | 2016-04-19 | 2016-04-19 |  | 0d |  | 48h |
| 83 | 1.4.3.2.1 | Back-end | manual | 1d? | 2016-04-19 | 2016-04-19 |  |  | Ruben Rocha; MIguel del Hoyo | 16h |
| 84 | 1.4.3.2.2 | Front-end | manual | 1d? | 2016-04-19 | 2016-04-19 |  |  | Montserrat Gonzalez; Daniela Najera; Saúl Gonzalez; Angel Gurrola | 32h |
| 85 | 1.4.3.3 | **Demostracion del calculo de pagos a plazos** |  | 1d? | 2016-04-19 | 2016-04-19 |  | 0d |  | 48h |
| 86 | 1.4.3.3.1 | Back-end | manual | 1d? | 2016-04-19 | 2016-04-19 |  |  | Ruben Rocha; MIguel del Hoyo | 16h |
| 87 | 1.4.3.3.2 | Front-end | manual | 1d? | 2016-04-19 | 2016-04-19 |  |  | Montserrat Gonzalez; Daniela Najera; Saúl Gonzalez; Angel Gurrola | 32h |
| 88 | 1.4.3.4 | **Boton de tramite de credito de nomina** |  | 1d? | 2016-04-19 | 2016-04-19 |  | 0d |  | 96h |
| 89 | 1.4.3.4.1 | **Crear boton de enlace** |  | 1d? | 2016-04-19 | 2016-04-19 |  | 0d |  | 48h |
| 90 | 1.4.3.4.1.1 | Back-end | manual | 1d? | 2016-04-19 | 2016-04-19 |  |  | Ruben Rocha; MIguel del Hoyo | 16h |
| 91 | 1.4.3.4.1.2 | Front-end | manual | 1d? | 2016-04-19 | 2016-04-19 |  |  | Montserrat Gonzalez; Daniela Najera; Saúl Gonzalez; Angel Gurrola | 32h |
| 92 | 1.4.3.4.2 | **Mostrar Pop-ups de la documentacion para tramite de la tarjeta en sucursal** |  | 1d? | 2016-04-19 | 2016-04-19 |  | 0d |  | 48h |
| 93 | 1.4.3.4.2.1 | Back-end | manual | 1d? | 2016-04-19 | 2016-04-19 |  |  | Ruben Rocha; MIguel del Hoyo | 16h |
| 94 | 1.4.3.4.2.2 | Front-end | manual | 1d? | 2016-04-19 | 2016-04-19 |  |  | Montserrat Gonzalez; Daniela Najera; Saúl Gonzalez; Angel Gurrola | 32h |
| 95 | 1.4.3.5 | **Boton Legal** |  | 1d? | 2016-04-19 | 2016-04-19 |  | 0d |  | 96h |
| 96 | 1.4.3.5.1 | **Crear boton de enlace** |  | 1d? | 2016-04-19 | 2016-04-19 |  | 0d |  | 48h |
| 97 | 1.4.3.5.1.1 | Back-end | manual | 1d? | 2016-04-19 | 2016-04-19 |  |  | Ruben Rocha; MIguel del Hoyo | 16h |
| 98 | 1.4.3.5.1.2 | Front-end | manual | 1d? | 2016-04-19 | 2016-04-19 |  |  | Montserrat Gonzalez; Daniela Najera; Saúl Gonzalez; Angel Gurrola | 32h |

| ID | WBS | Task | Type | Duration | Start | Finish | Total slack | Resources | Work |
| --- | --- | --- | --- | --- | --- | --- | --- | --- | --- |
| 99 | 1.4.3.5.2 | **Mostrar la informacion legal de la promocion** |  | 1d? | 2016-04-19 | 2016-04-19 | 0d |  | 48h |
| 100 | 1.4.3.5.2.1 | Back-end | manual | 1d? | 2016-04-19 | 2016-04-19 |  | Ruben Rocha; MIguel del Hoyo | 16h |
| 101 | 1.4.3.5.2.2 | Front-end | manual | 1d? | 2016-04-19 | 2016-04-19 |  | Montserrat Gonzalez; Daniela Najera; Saúl Gonzalez; Angel Gurrola | 32h |
| 102 | 1.4.3.6 | **Boton de enviar informacion** |  | 1d? | 2016-04-19 | 2016-04-19 | 0d |  | 96h |
| 103 | 1.4.3.6.1 | **Crear boton de enlace** |  | 1d? | 2016-04-19 | 2016-04-19 | 0d |  | 48h |
| 104 | 1.4.3.6.1.1 | Back-end | manual | 1d? | 2016-04-19 | 2016-04-19 |  | Ruben Rocha; MIguel del Hoyo | 16h |
| 105 | 1.4.3.6.1.2 | Front-end | manual | 1d? | 2016-04-19 | 2016-04-19 |  | Montserrat Gonzalez; Daniela Najera; Saúl Gonzalez; Angel Gurrola | 32h |
| 106 | 1.4.3.6.2 | **Mostrar formulario para que el prospecto sea contactado** |  | 1d | 2016-04-19 | 2016-04-19 | 0d |  | 48h |
| 107 | 1.4.3.6.2.1 | Back-end | manual | 1d | 2016-04-19 | 2016-04-19 |  | Ruben Rocha; MIguel del Hoyo | 16h |
| 108 | 1.4.3.6.2.2 | Front-end | manual | 1d | 2016-04-19 | 2016-04-19 |  | Montserrat Gonzalez; Daniela Najera; Saúl Gonzalez; Angel Gurrola | 32h |
